# Construction schedule v1.0

Schedule from an IFC model, 2027-03-01 to 2028-05-04.
Zuidas Office Building

## Schedule

| ID | Activity | Type | Duration | Start | Finish | Predecessors | Planned start | Planned finish | Total float | Free float | Resources |
| --- | --- | --- | --- | --- | --- | --- | --- | --- | --- | --- | --- |
| 1 | **1. Preparation** |  | 5d | 2027-03-01 | 2027-03-30 |  | 2027-03-01 | 2027-03-05 | 0d |  |  |
| 1.1 | Set up site |  | 8d | 2027-03-01 | 2027-03-10 |  |  |  | 0d |  | Site works contractor |
| 1.2 | Stakeholder management |  | 5d | 2027-03-11 | 2027-03-17 | 1.1 | 2027-03-01 | 2027-03-05 | 265d | 0d | Project management |
| 1.3 | Traffic management |  | 3d | 2027-03-18 | 2027-03-22 | 1.2 | 2027-03-01 | 2027-03-03 | 265d | 0d | Site works contractor |
| 1.4 | Piezometer monitoring |  | 3d | 2027-03-23 | 2027-03-25 | 1.3 | 2027-03-01 | 2027-03-03 | 265d | 0d | Geotechnical monitoring contractor |
| 1.5 | Start of construction | milestone | 0d | 2027-03-30 | 2027-03-30 | 1.4 | 2027-03-01 | 2027-03-01 | 265d |  |  |
| 2 | **2. Earthworks & foundations** |  | 5d | 2027-03-15 | 2027-09-09 |  | 2027-03-01 | 2027-03-05 | 0d |  |  |
| 2.1 | Sheet pile sections |  | 15d | 2027-03-15 | 2027-04-06 | 1.1 SS+10d | 2027-03-01 | 2027-03-19 | 0d |  | Piling contractor |
| 2.2 | Wellpoint dewatering |  | 5d | 2027-04-07 | 2027-04-13 | 2.1 | 2027-03-01 | 2027-03-05 | 167d | 0d | Earthworks contractor |
| 2.3 | Excavate to level -2 |  | 12d | 2027-04-14 | 2027-04-30 | 2.2 | 2027-03-01 | 2027-03-16 | 167d | 0d | Earthworks contractor |
| 2.4 | Excavate to level -1 |  | 10d | 2027-05-03 | 2027-05-19 | 2.3 | 2027-03-01 | 2027-03-12 | 167d | 0d | Earthworks contractor |
| 2.5 | Bore foundation piles |  | 20d | 2027-05-20 | 2027-06-16 | 2.4 | 2027-03-01 | 2027-03-26 | 167d | 0d | Piling contractor |
| 2.6 | Foundation beams |  | 10d | 2027-06-17 | 2027-06-30 | 2.5 | 2027-03-01 | 2027-03-12 | 167d | 0d | Structural works crew; Steel fixers; Concrete C30/37 |
| 2.7 | Basement floor P2 |  | 8d | 2027-07-01 | 2027-07-12 | 2.6 | 2027-03-01 | 2027-03-10 | 167d | 0d | Structural works crew; Concrete C30/37 |
| 2.8 | Basement floor P1 |  | 8d | 2027-07-13 | 2027-07-22 | 2.7 | 2027-03-01 | 2027-03-10 | 167d | 0d | Structural works crew; Concrete C30/37 |
| 2.9 | Pour basement walls |  | 12d | 2027-07-23 | 2027-08-30 | 2.8 | 2027-03-01 | 2027-03-16 | 167d | 0d | Structural works crew; Steel fixers; Concrete C30/37 |
| 2.10 | Basement waterproofing |  | 8d | 2027-08-31 | 2027-09-09 | 2.9 | 2027-03-01 | 2027-03-10 | 167d |  | Structural works crew |
| 3 | **3. Structural works** |  | 5d | 2027-03-23 | 2027-09-08 |  | 2027-03-01 | 2027-03-05 | 0d |  |  |
| 3.1 | Ground floor columns & slab |  | 10d | 2027-03-23 | 2027-04-07 | 2.1 SS | 2027-03-01 | 2027-03-12 | 0d |  | Structural works crew; Steel fixers; Tower crane; Concrete C30/37 |
| 3.2 | Floor 1 structural works |  | 8d | 2027-04-08 | 2027-04-19 | 3.1 | 2027-03-01 | 2027-03-10 | 0d |  | Structural works crew; Tower crane; Concrete C30/37 |
| 3.3 | Floor 2 structural works |  | 8d | 2027-04-20 | 2027-04-30 | 3.2 | 2027-03-01 | 2027-03-10 | 0d |  | Structural works crew; Tower crane; Concrete C30/37 |
| 3.4 | Floor 3 structural works |  | 8d | 2027-05-03 | 2027-05-14 | 3.3 | 2027-03-01 | 2027-03-10 | 0d |  | Structural works crew; Tower crane; Concrete C30/37 |
| 3.5 | Floor 4 structural works |  | 8d | 2027-05-18 | 2027-05-27 | 3.4 | 2027-03-01 | 2027-03-10 | 0d |  | Structural works crew; Tower crane; Concrete C30/37 |
| 3.6 | Floor 5 structural works |  | 8d | 2027-05-28 | 2027-06-08 | 3.5 | 2027-03-01 | 2027-03-10 | 0d |  | Structural works crew; Tower crane; Concrete C30/37 |
| 3.7 | Floor 6 structural works |  | 8d | 2027-06-09 | 2027-06-18 | 3.6 | 2027-03-01 | 2027-03-10 | 0d |  | Structural works crew; Tower crane; Concrete C30/37 |
| 3.8 | Floor 7 structural works |  | 8d | 2027-06-21 | 2027-06-30 | 3.7 | 2027-03-01 | 2027-03-10 | 0d |  | Structural works crew; Tower crane; Concrete C30/37 |
| 3.9 | Floor 8 structural works |  | 8d | 2027-07-01 | 2027-07-12 | 3.8 | 2027-03-01 | 2027-03-10 | 0d |  | Structural works crew; Tower crane; Concrete C30/37 |
| 3.10 | Concrete stair and lift core |  | 20d | 2027-07-08 | 2027-08-25 | 3.9 SS+5d | 2027-03-01 | 2027-03-26 | 0d |  | Core formwork gang; Steel fixers; Concrete C30/37 |
| 3.11 | Steel roof structure |  | 10d | 2027-08-26 | 2027-09-08 | 3.10 | 2027-03-01 | 2027-03-12 | 0d |  | Structural steel contractor; Tower crane |
| 3.12 | Topping out | milestone | 0d | 2027-09-08 | 2027-09-08 | 3.11 | 2027-03-01 | 2027-03-01 | 168d |  |  |

| ID | Activity | Type | Duration | Start | Finish | Predecessors | Planned start | Planned finish | Total float | Free float | Resources |
| --- | --- | --- | --- | --- | --- | --- | --- | --- | --- | --- | --- |
| 4 | **4. Facade** |  | 5d | 2027-07-21 | 2027-10-21 |  | 2027-03-01 | 2027-03-05 | 0d |  |  |
| 4.1 | Curtain wall installation, phase 1 |  | 15d | 2027-07-21 | 2027-08-31 | 3.11 FS-21d | 2027-03-01 | 2027-03-19 | 0d |  | Facade contractor |
| 4.2 | Curtain wall installation, phase 2 |  | 15d | 2027-09-01 | 2027-09-21 | 4.1 | 2027-03-01 | 2027-03-19 | 0d |  | Facade contractor |
| 4.3 | Curtain wall installation, phase 3 |  | 12d | 2027-09-22 | 2027-10-07 | 4.2 | 2027-03-01 | 2027-03-16 | 0d |  | Facade contractor |
| 4.4 | Roof finishes and services |  | 10d | 2027-10-08 | 2027-10-21 | 4.3, 3.11 FF+2d | 2027-03-01 | 2027-03-12 | 0d |  | Roofing contractor |
| 4.5 | Wind and weathertight | milestone | 0d | 2027-10-21 | 2027-10-21 | 4.4 | 2027-03-01 | 2027-03-01 | 137d |  |  |
| 5 | **5. Building services** |  | 5d | 2027-10-22 | 2028-02-22 |  | 2027-03-01 | 2027-03-05 | 0d |  |  |
| 5.1 | Main electrical switchroom |  | 10d | 2027-10-22 | 2027-11-04 | 4.4 | 2027-03-01 | 2027-03-12 | 0d |  | Electricians |
| 5.2 | Risers, electrical |  | 12d | 2027-11-05 | 2027-11-22 | 5.1 | 2027-03-01 | 2027-03-16 | 49d | 0d | Electricians |
| 5.3 | Risers, mechanical services |  | 12d | 2027-11-10 | 2027-11-25 | 5.2 SS+3d | 2027-03-01 | 2027-03-16 | 49d | 0d | Mechanical fitters |
| 5.4 | Air handling units |  | 10d | 2027-11-26 | 2027-12-09 | 5.3 | 2027-03-01 | 2027-03-12 | 49d | 0d | Mechanical fitters |
| 5.5 | Ventilation ductwork |  | 15d | 2027-12-10 | 2027-12-30 | 5.4 | 2027-03-01 | 2027-03-19 | 49d | 0d | Mechanical fitters |
| 5.6 | Sprinkler installation |  | 10d | 2027-12-31 | 2028-01-13 | 5.5 | 2027-03-01 | 2027-03-12 | 49d | 0d | Mechanical fitters |
| 5.7 | Lift installation |  | 20d | 2028-01-14 | 2028-02-10 | 5.6 | 2027-03-01 | 2027-03-26 | 49d | 0d | Lift contractor |
| 5.8 | BMS/building management |  | 8d | 2028-02-11 | 2028-02-22 | 5.7 | 2027-03-01 | 2027-03-10 | 49d |  | Electricians |
| 6 | **6. Fit-out** |  | 5d | 2027-12-30 | 2028-03-22 |  | 2027-03-01 | 2027-03-05 | 0d |  |  |
| 6.1 | Office system partitions |  | 15d | 2027-12-30 | 2028-01-19 | 5.1 SS+49d | 2027-03-01 | 2027-03-19 | 0d |  | Fit-out crew |
| 6.2 | Suspended ceilings |  | 12d | 2028-01-20 | 2028-02-04 | 6.1 | 2027-03-01 | 2027-03-16 | 0d |  | Fit-out crew |
| 6.3 | Raised floors |  | 10d | 2028-02-07 | 2028-02-18 | 6.2 | 2027-03-01 | 2027-03-12 | 0d |  | Fit-out crew |
| 6.4 | Sanitary rooms |  | 8d | 2028-02-21 | 2028-03-01 | 6.3 | 2027-03-01 | 2027-03-10 | 0d |  | Fit-out crew; Mechanical fitters |
| 6.5 | Kitchen/pantry fit-out |  | 5d | 2028-03-02 | 2028-03-08 | 6.4 | 2027-03-01 | 2027-03-05 | 0d |  | Fit-out crew |
| 6.6 | Painting & finishing |  | 10d | 2028-03-09 | 2028-03-22 | 6.5 | 2027-03-01 | 2027-03-12 | 0d |  | Painters |
| 7 | **7. Site works & handover** |  | 5d | 2028-03-23 | 2028-05-04 |  | 2027-03-01 | 2027-03-05 | 0d |  |  |
| 7.1 | Paving & landscaping |  | 10d | 2028-03-23 | 2028-04-05 | 6.6 | 2027-03-01 | 2027-03-12 | 0d |  | Site works contractor |
| 7.2 | Entrance & lobby fit-out |  | 8d | 2028-04-06 | 2028-04-19 | 7.1 | 2027-03-01 | 2027-03-10 | 0d |  | Fit-out crew |
| 7.3 | Testing & commissioning |  | 10d | 2028-04-20 | 2028-05-04 | 7.2 | 2027-03-01 | 2027-03-12 | 0d |  | Electricians; Mechanical fitters; Project management |
| 7.4 | Handover | milestone | 0d | 2028-05-04 | 2028-05-04 | 7.3 | 2027-03-01 | 2027-03-01 | 0d |  |  |
