# Construction schedule v1.0

Schedule from an IFC model, 2027-03-01 to 2028-01-18.
De Linde Care Centre

## Schedule

| ID | Activity | Type | Duration | Start | Finish | Predecessors | Planned start | Planned finish | Total float | Free float | Resources |
| --- | --- | --- | --- | --- | --- | --- | --- | --- | --- | --- | --- |
| 1 | **1. Preparation** |  | 5d | 2027-03-01 | 2027-03-16 |  | 2027-03-01 | 2027-03-05 | 0d |  |  |
| 1.1 | Set up site |  | 5d | 2027-03-01 | 2027-03-05 |  |  |  | 0d |  | Civils and landscaping contractor |
| 1.2 | Additional soil investigation |  | 3d | 2027-03-08 | 2027-03-10 | 1.1 | 2027-03-01 | 2027-03-03 | 199d | 0d |  |
| 1.3 | Fell and transplant trees |  | 3d | 2027-03-11 | 2027-03-15 | 1.2 | 2027-03-01 | 2027-03-03 | 199d | 0d | Civils and landscaping contractor |
| 1.4 | Start of construction | milestone | 0d | 2027-03-16 | 2027-03-16 | 1.3 | 2027-03-01 | 2027-03-01 | 199d |  |  |
| 2 | **2. Foundations** |  | 5d | 2027-03-09 | 2027-04-30 |  | 2027-03-01 | 2027-03-05 | 0d |  |  |
| 2.1 | Pile driving, foundation piles |  | 12d | 2027-03-09 | 2027-03-24 | 1.1 SS+6d | 2027-03-01 | 2027-03-16 | 0d |  | Piling contractor |
| 2.2 | Foundation beams |  | 8d | 2027-03-25 | 2027-04-07 | 2.1 | 2027-03-01 | 2027-03-10 | 169d | 0d | Structural works crew; Concrete C30/37 |
| 2.3 | Sewerage and underground pipework |  | 8d | 2027-04-08 | 2027-04-19 | 2.2 | 2027-03-01 | 2027-03-10 | 169d | 0d | Civils and landscaping contractor |
| 2.4 | Pour ground floor slab |  | 8d | 2027-04-20 | 2027-04-30 | 2.3 | 2027-03-01 | 2027-03-10 | 169d |  | Structural works crew; Concrete C30/37 |
| 3 | **3. Structural works** |  | 5d | 2027-03-16 | 2027-06-24 |  | 2027-03-01 | 2027-03-05 | 0d |  |  |
| 3.1 | Ground floor load-bearing structure |  | 12d | 2027-03-16 | 2027-04-02 | 2.1 SS | 2027-03-01 | 2027-03-16 | 0d |  | Structural works crew; Mobile crane; Concrete C30/37 |
| 3.2 | Floor 1 concrete |  | 10d | 2027-04-05 | 2027-04-16 | 3.1 | 2027-03-01 | 2027-03-12 | 0d |  | Structural works crew; Mobile crane; Concrete C30/37 |
| 3.3 | Floor 2 concrete |  | 10d | 2027-04-19 | 2027-05-03 | 3.2 | 2027-03-01 | 2027-03-12 | 0d |  | Structural works crew; Mobile crane; Concrete C30/37 |
| 3.4 | Facade masonry |  | 15d | 2027-05-04 | 2027-05-27 | 3.3 | 2027-03-01 | 2027-03-19 | 0d |  | Bricklayers; Mobile crane |
| 3.5 | Internal walls, sand-lime brick |  | 10d | 2027-05-28 | 2027-06-10 | 3.4 | 2027-03-01 | 2027-03-12 | 0d |  | Bricklayers |
| 3.6 | Roof structure |  | 10d | 2027-06-11 | 2027-06-24 | 3.5 | 2027-03-01 | 2027-03-12 | 0d |  | Structural works crew; Mobile crane |
| 3.7 | Topping out | milestone | 0d | 2027-06-24 | 2027-06-24 | 3.6 | 2027-03-01 | 2027-03-01 | 133d |  |  |
| 4 | **4. Facade & roof** |  | 5d | 2027-06-08 | 2027-08-16 |  | 2027-03-01 | 2027-03-05 | 0d |  |  |
| 4.1 | Facade insulation and finish |  | 12d | 2027-06-08 | 2027-06-23 | 3.6 FS-13d | 2027-03-01 | 2027-03-16 | 0d |  | Facade contractor |
| 4.2 | Window frames and screens |  | 10d | 2027-06-24 | 2027-07-07 | 4.1 | 2027-03-01 | 2027-03-12 | 0d |  | Facade contractor |
| 4.3 | Roof insulation and covering |  | 8d | 2027-07-08 | 2027-07-19 | 4.2 | 2027-03-01 | 2027-03-10 | 0d |  | Roofing contractor |
| 4.4 | Roof edges and rainwater drainage |  | 5d | 2027-07-20 | 2027-08-16 | 4.3, 3.6 FF+2d | 2027-03-01 | 2027-03-05 | 0d |  | Roofing contractor |
| 4.5 | Wind and weathertight | milestone | 0d | 2027-08-16 | 2027-08-16 | 4.4 | 2027-03-01 | 2027-03-01 | 111d |  |  |

| ID | Activity | Type | Duration | Start | Finish | Predecessors | Planned start | Planned finish | Total float | Free float | Resources |
| --- | --- | --- | --- | --- | --- | --- | --- | --- | --- | --- | --- |
| 5 | **5. Building services** |  | 5d | 2027-08-17 | 2027-11-24 |  | 2027-03-01 | 2027-03-05 | 0d |  |  |
| 5.1 | Main electrical distribution |  | 8d | 2027-08-17 | 2027-08-26 | 4.4 | 2027-03-01 | 2027-03-10 | 0d |  | Electricians |
| 5.2 | Emergency power supply |  | 5d | 2027-08-27 | 2027-09-02 | 5.1 | 2027-03-01 | 2027-03-05 | 39d | 0d | Electricians |
| 5.3 | Oxygen and medical gases |  | 8d | 2027-09-03 | 2027-09-14 | 5.2 | 2027-03-01 | 2027-03-10 | 39d | 0d | Medical gas contractor |
| 5.4 | Heating and cooling |  | 10d | 2027-09-08 | 2027-09-21 | 5.3 SS+3d | 2027-03-01 | 2027-03-12 | 39d | 0d | Mechanical fitters |
| 5.5 | Ventilation with HEPA filters |  | 10d | 2027-09-22 | 2027-10-05 | 5.4 | 2027-03-01 | 2027-03-12 | 39d | 0d | Mechanical fitters |
| 5.6 | Sprinkler and fire alarm |  | 8d | 2027-10-06 | 2027-10-15 | 5.5 | 2027-03-01 | 2027-03-10 | 39d | 0d | Mechanical fitters |
| 5.7 | Lift installation |  | 15d | 2027-10-18 | 2027-11-05 | 5.6 | 2027-03-01 | 2027-03-19 | 39d | 0d | Lift contractor |
| 5.8 | Nurse call system |  | 5d | 2027-11-08 | 2027-11-12 | 5.7 | 2027-03-01 | 2027-03-05 | 39d | 0d | Electricians |
| 5.9 | ICT cabling |  | 8d | 2027-11-15 | 2027-11-24 | 5.8 | 2027-03-01 | 2027-03-10 | 39d |  | Electricians |
| 6 | **6. Fit-out** |  | 5d | 2027-10-11 | 2027-12-23 |  | 2027-03-01 | 2027-03-05 | 0d |  |  |
| 6.1 | Partition walls |  | 8d | 2027-10-11 | 2027-10-20 | 5.1 SS+39d | 2027-03-01 | 2027-03-10 | 0d |  | Fit-out crew |
| 6.2 | Finish ceilings and walls |  | 10d | 2027-10-21 | 2027-11-03 | 6.1 | 2027-03-01 | 2027-03-12 | 0d |  | Fit-out crew |
| 6.3 | Tiling, wet rooms |  | 8d | 2027-11-04 | 2027-11-15 | 6.2 | 2027-03-01 | 2027-03-10 | 0d |  | Tilers |
| 6.4 | Screeds and floor finishes |  | 8d | 2027-11-16 | 2027-11-25 | 6.3 | 2027-03-01 | 2027-03-10 | 0d |  | Fit-out crew |
| 6.5 | Painting |  | 10d | 2027-11-26 | 2027-12-09 | 6.4 | 2027-03-01 | 2027-03-12 | 0d |  | Painters |
| 6.6 | Kitchens and pantry |  | 5d | 2027-12-10 | 2027-12-16 | 6.5 | 2027-03-01 | 2027-03-05 | 0d |  | Fit-out crew |
| 6.7 | Install sanitary fittings |  | 5d | 2027-12-17 | 2027-12-23 | 6.6 | 2027-03-01 | 2027-03-05 | 0d |  | Mechanical fitters |
| 7 | **7. Handover** |  | 5d | 2027-12-24 | 2028-01-18 |  | 2027-03-01 | 2027-03-05 | 0d |  |  |
| 7.1 | Construct external areas |  | 8d | 2027-12-24 | 2028-01-04 | 6.7 | 2027-03-01 | 2027-03-10 | 0d |  | Civils and landscaping contractor |
| 7.2 | Room furnishing |  | 5d | 2028-01-05 | 2028-01-11 | 7.1 | 2027-03-01 | 2027-03-05 | 0d |  | Fit-out crew |
| 7.3 | Test building services |  | 5d | 2028-01-12 | 2028-01-18 | 7.2 | 2027-03-01 | 2027-03-05 | 0d |  | Commissioning engineer; Electricians; Mechanical fitters |
| 7.4 | Handover | milestone | 0d | 2028-01-18 | 2028-01-18 | 7.3 | 2027-03-01 | 2027-03-01 | 0d |  |  |
